# Current Project Plan

How a schedule from MS Project changed from version to version. A marks actual dates.

## Version 1 (saved 2018-05-22, file Tracking Gantt Chart - 21402733.mpp)

Note of the change: This is my project management docuemnt with Gantt charts

| ID | WBS | Task | Duration | Start | Finish | Predecessors | Total float | Constraint |
| --- | --- | --- | --- | --- | --- | --- | --- | --- |
| 1 | 1 | **Design** | 14.5d | 2018-03-26 | 2018-04-13 |  | 0d |  |
| 2 |  | Develop functional specifications | 7d | 2018-03-26 | 2018-04-03 |  | 0d | start no earlier than 2018-03-26 |
| 3 |  | Develop prototype based on functional specifications | 4d | 2018-04-04 | 2018-04-09 | 2 | 0d |  |
| 4 |  | Incorporate feedback into functional specifications | 3d | 2018-04-10 | 2018-04-12 | 3 | 0d |  |
| 5 |  | Obtain approval to proceed | 4h | 2018-04-13 | 2018-04-13 | 4 | 0d |  |
| 6 |  | Design complete | 0d | 2018-04-13 | 2018-04-13 | 5 | 0d |  |
| 7 | 2 | **Development** | 25d | 2018-04-13 | 2018-05-18 |  | 0d |  |
| 8 |  | Develop code | 25d | 2018-04-13 | 2018-05-18 | 6 | 0d |  |
| 9 |  | Development complete | 0d | 2018-05-18 | 2018-05-18 | 8 | 13.5d |  |
| 10 | 3 | **Testing** | 51d | 2018-04-13 | 2018-06-25 |  | 10d |  |
| 11 |  | Develop unit and integration test plans | 8d | 2018-04-13 | 2018-04-25 | 6 | 53d |  |
| 12 | 3.2 | **Unit Testing** | 14d | 2018-05-18 | 2018-06-07 |  | 0d |  |
| 13 |  | Test component modules to product specifications | 9d | 2018-05-18 | 2018-05-31 | 8 | 0d |  |
| 14 |  | Modify and retest code | 5d | 2018-05-31 | 2018-06-07 | 13 | 0d |  |
| 15 |  | Unit testing complete | 0d | 2018-06-07 | 2018-06-07 | 14 | 0d |  |
| 16 | 3.3 | **Integration Testing** | 12d | 2018-06-07 | 2018-06-25 |  | 0d |  |
| 17 |  | Integration test | 10d | 2018-06-07 | 2018-06-21 | 15 | 0d |  |
| 18 |  | Modified and retest code | 2d | 2018-06-21 | 2018-06-25 | 17 | 0d |  |
| 19 |  | Integration testing complete | 0d | 2018-06-25 | 2018-06-25 | 18 | 0d |  |
| 20 | 4 | **Training** | 37.5d | 2018-04-13 | 2018-06-05 |  | 13.5d |  |
| 21 |  | Develop training specifications | 4d | 2018-04-13 | 2018-04-19 | 6 | 34.5d |  |
| 22 |  | Develop training materials | 2w | 2018-05-18 | 2018-06-01 | 21, 9 | 13.5d |  |
| 23 |  | Finalize training materials | 2.5d | 2018-06-01 | 2018-06-05 | 22 | 13.5d |  |
| 24 |  | Training materials complete | 0d | 2018-06-05 | 2018-06-05 | 23 | 13.5d |  |
| 25 | 5 | **Documentation** | 42.5d | 2018-04-13 | 2018-06-12 |  | 7.5d |  |
| 26 |  | Develop Help specification | 1d | 2018-04-13 | 2018-04-16 | 6 | 19d |  |
| 27 |  | Develop Help system | 3w | 2018-05-02 | 2018-05-22 | 26, 8FS-5% | 7.5d |  |
| 28 |  | Develop user manuals | 3w | 2018-05-23 | 2018-06-12 | 8FS-5%, 27 | 7.5d |  |
| 29 |  | Documentation complete | 0d | 2018-06-12 | 2018-06-12 | 28 | 7.5d |  |
| 30 | 6 | **Pilot** | 15.5d | 2018-06-13 | 2018-07-04 |  | 0d |  |
| 31 |  | Develop software delivery mechanism | 1d | 2018-06-13 | 2018-06-13 | 29 | 7.5d |  |
| 32 |  | Install/deploy software | 1d | 2018-06-25 | 2018-06-26 | 19, 31, 24 | 0d |  |
| 33 |  | Obtain user feedback | 1w | 2018-06-26 | 2018-07-03 | 32 | 0d |  |
| 34 |  | Evaluate testing information | 1d | 2018-07-03 | 2018-07-04 | 33 | 0d |  |
| 35 |  | Pilot complete | 0d | 2018-07-04 | 2018-07-04 | 34 | 0d |  |
| 36 | 7 | **Deployment** | 3d | 2018-07-04 | 2018-07-09 |  | 0d |  |
| 37 |  | Develop deployment methodology | 1d | 2018-07-04 | 2018-07-05 | 35 | 0d |  |
| 38 |  | Train support staff | 1d | 2018-07-05 | 2018-07-06 | 37 | 0d |  |
| 39 |  | Deploy software | 1d | 2018-07-06 | 2018-07-09 | 38 | 0d |  |
| 40 |  | Deployment complete | 0d | 2018-07-09 | 2018-07-09 | 39 | 0d |  |

## Version 2 (saved 2018-06-07, file Updated Gantt Chart - 21402733.mpp)

Note of the change: This is my project management docuemnt with Gantt charts

Last finish 2018-07-09 → 2018-07-13 (+4d). Complete tasks 0 → 11.

Added:

| ID | Task | Duration | Start | Finish | Predecessors | Constraint | Resources |
| --- | --- | --- | --- | --- | --- | --- | --- |
| 41 | **Relocation** | 3d | 2018-05-26 | 2018-05-28 |  |  |  |
| 42 | Hire bizdojo office space | 2d | 2018-05-26 | 2018-05-27 |  | start no earlier than 2018-05-26 | Project Manager |
| 43 | Purchase HP laptops | 1d | 2018-05-28 | 2018-05-28 | 42 | start no earlier than 2018-05-27 | Project Manager |

Changed:

| ID | Task | Start | Finish | Duration | Complete | Total float | Predecessors | Other |
| --- | --- | --- | --- | --- | --- | --- | --- | --- |
| 1 | **Design** | 2018-03-26 A | 2018-04-13 A |  | 0% → 100% | 0d → none |  |  |
| 2 | Develop functional specifications | 2018-03-26 A | 2018-04-03 A |  | 0% → 100% | 0d → none |  |  |
| 3 | Develop prototype based on functional specifications | 2018-04-04 A | 2018-04-09 A |  | 0% → 100% | 0d → none |  |  |
| 4 | Incorporate feedback into functional specifications | 2018-04-10 A | 2018-04-12 A |  | 0% → 100% | 0d → none |  |  |
| 5 | Obtain approval to proceed | 2018-04-13 A | 2018-04-13 A |  | 0% → 100% | 0d → none |  |  |
| 6 | Design complete | 2018-04-13 A | 2018-04-13 A |  | 0% → 100% | 0d → none |  |  |
| 7 | **Development** | 2018-04-13 A | 2018-05-18 A |  | 0% → 100% | 0d → none |  |  |
| 8 | Develop code | 2018-04-13 A | 2018-05-18 A |  | 0% → 100% | 0d → none |  |  |
| 9 | Development complete | 2018-05-18 A | 2018-05-18 A |  | 0% → 100% | 13.5d → none |  |  |
| 10 | **Testing** | 2018-04-13 A | 2018-06-25 → 2018-06-29 (+4d) | 51d → 57.5d | 0% → 34% | 10d → 0d |  |  |
| 11 | Develop unit and integration test plans | 2018-04-13 A | 2018-04-25 A |  | 0% → 100% | 53d → none |  |  |
| 12 | **Unit Testing** | 2018-05-18 A | 2018-06-07 → 2018-06-13 (+6d) | 14d → 20.5d | 0% → 27% |  |  |  |
| 13 | Test component modules to product specifications | 2018-05-18 A | 2018-05-31 → 2018-06-06 (+6d) | 9d → 11.5d | 0% → 39% |  | 8 → 8, 43 | constraint none → finish no earlier than 2018-06-04 |
| 14 | Modify and retest code | 2018-05-31 → 2018-06-07 (+7d) | 2018-06-07 → 2018-06-13 (+6d) |  |  |  |  |  |
| 15 | Unit testing complete | 2018-06-07 → 2018-06-13 (+6d) | 2018-06-07 → 2018-06-13 (+6d) |  |  |  |  |  |
| 16 | **Integration Testing** | 2018-06-07 → 2018-06-14 (+7d) | 2018-06-25 → 2018-06-29 (+4d) |  |  |  |  |  |
| 17 | Integration test | 2018-06-07 → 2018-06-14 (+7d) | 2018-06-21 → 2018-06-27 (+6d) |  |  |  |  |  |
| 18 | Modified and retest code | 2018-06-21 → 2018-06-28 (+7d) | 2018-06-25 → 2018-06-29 (+4d) |  |  |  |  |  |
| 19 | Integration testing complete | 2018-06-25 → 2018-06-29 (+4d) | 2018-06-25 → 2018-06-29 (+4d) |  |  |  |  |  |
| 20 | **Training** | 2018-04-13 A | 2018-06-05 → 2018-06-13 (+8d) | 37.5d → 45d | 0% → 36% | 13.5d → 12.5d |  |  |
| 21 | Develop training specifications | 2018-04-13 A | 2018-04-19 A |  | 0% → 100% | 34.5d → none |  |  |
| 22 | Develop training materials | 2018-05-18 A | 2018-06-01 → 2018-06-08 (+7d) | 2w → 2.3w | 0% → 22% | 13.5d → 12.5d | 21, 9 → 21, 9, 43 | constraint none → finish no earlier than 2018-06-04 |
| 23 | Finalize training materials | 2018-06-01 → 2018-06-11 (+10d) | 2018-06-05 → 2018-06-13 (+8d) |  |  | 13.5d → 12.5d |  |  |
| 24 | Training materials complete | 2018-06-05 → 2018-06-13 (+8d) | 2018-06-05 → 2018-06-13 (+8d) |  |  | 13.5d → 12.5d |  |  |
| 25 | **Documentation** | 2018-04-13 A |  | 42.5d → 44.5d | 0% → 64% | 7.5d → 12d |  |  |
| 26 | Develop Help specification | 2018-04-13 A | 2018-04-16 A |  | 0% → 100% | 19d → none |  |  |
| 27 | Develop Help system | 2018-05-02 A | 2018-05-22 A |  | 0% → 100% | 7.5d → none |  |  |
| 28 | Develop user manuals | 2018-05-23 A |  |  | 0% → 25% | 7.5d → 12d |  |  |
| 30 | **Pilot** |  | 2018-07-04 → 2018-07-10 (+6d) | 15.5d → 20d |  |  |  |  |
| 32 | Install/deploy software | 2018-06-25 → 2018-07-02 (+7d) | 2018-06-26 → 2018-07-02 (+6d) |  |  |  |  |  |
| 33 | Obtain user feedback | 2018-06-26 → 2018-07-03 (+7d) | 2018-07-03 → 2018-07-09 (+6d) |  |  |  |  |  |
| 34 | Evaluate testing information | 2018-07-03 → 2018-07-10 (+7d) | 2018-07-04 → 2018-07-10 (+6d) |  |  |  |  |  |
| 35 | Pilot complete | 2018-07-04 → 2018-07-10 (+6d) | 2018-07-04 → 2018-07-10 (+6d) |  |  |  |  |  |
| 36 | **Deployment** | 2018-07-04 → 2018-07-11 (+7d) | 2018-07-09 → 2018-07-13 (+4d) |  |  |  |  |  |
| 37 | Develop deployment methodology | 2018-07-04 → 2018-07-11 (+7d) | 2018-07-05 → 2018-07-11 (+6d) |  |  |  |  |  |
| 38 | Train support staff | 2018-07-05 → 2018-07-12 (+7d) | 2018-07-06 → 2018-07-12 (+6d) |  |  |  |  |  |
| 39 | Deploy software | 2018-07-06 → 2018-07-13 (+7d) | 2018-07-09 → 2018-07-13 (+4d) |  |  |  |  |  |
| 40 | Deployment complete | 2018-07-09 → 2018-07-13 (+4d) | 2018-07-09 → 2018-07-13 (+4d) |  |  |  |  |  |
